# caMOD 2.2

Schedule from MS Project, 2007-09-28 to 2008-04-28.
SAIC

## Calendars

- Standard: Mon-Fri 08:00-12:00, 13:00-17:00; Sat-Sun off.

## Resources

| Resource |
| --- |
| GuruswamiS |
| NCICB |
| Anand |
| Ulli |
| QA |
| Sima |
| DBA |
| 2nd Resource |
| Sima |
| Srini |
| Grid Resource |
| App Support |
| Systems |
| Jill |

## Schedule

| ID | WBS | Task | Type | Duration | Start | Finish | Predecessors | Total slack | Free slack | Resources | Work |
| --- | --- | --- | --- | --- | --- | --- | --- | --- | --- | --- | --- |
| 1 | 1 | **caMOD 2.4 Release** |  | 152d | 2007-09-28 | 2008-04-28 |  | 0d |  |  | 1886h |
| 2 | 1.1 | **Inception Phase** |  | 16d | 2007-09-28 | 2007-10-19 |  | 115d |  |  | 48h |
| 3 | 1.1.1 | Use Case and Design Doc (caBIG template) |  | 2w | 2007-09-28 | 2007-10-11 |  | 21d | 0d | Sima [50%] | 40h |
| 4 | 1.1.2 | Review use cases / design with the "Review Board" |  | 6d | 2007-10-12 | 2007-10-19 | 3 | 21d | 0d | Sima | 8h |
| 5 | 1.2 | Milestone: Completed Design document | milestone | 0d | 2007-10-19 | 2007-10-19 | 4 | 21d | 0d | Anand |  |
| 6 | 1.3 | **Elaboration Phase** |  | 21d | 2007-10-22 | 2007-11-19 |  | 115d |  |  | 168h |
| 7 | 1.3.1 | Incorporate changes to the Object Model |  | 2d | 2007-10-22 | 2007-10-23 | 5 | 21d | 0d | Ulli | 16h |
| 8 | 1.3.2 | Make code changes due to Object Model changes |  | 5d | 2007-10-24 | 2007-10-30 | 7 | 21d | 0d | Sima | 40h |
| 9 | 1.3.3 | Milestone: Soft Freeze Object Model |  | 2d | 2007-10-31 | 2007-11-01 | 8 | 21d | 0d | Sima | 16h |
| 10 | 1.3.4 | Round Trip, Import XMI into EA |  | 2d | 2007-11-02 | 2007-11-05 | 9 | 21d | 0d | Ulli | 16h |
| 11 | 1.3.5 | Register Model in caDSR |  | 10d | 2007-11-06 | 2007-11-19 | 10 | 21d |  | Ulli | 80h |
| 12 | 1.4 | Milestone: Model Registered in CADSR | milestone | 0d | 2007-09-28 | 2007-09-28 |  | 58d |  |  |  |
| 13 | 1.5 | **iteration 1:** |  | 152d | 2007-09-28 | 2008-04-28 |  | 0d |  |  | 1670h |
| 14 | 1.5.1 | **Admin Features and Misc bugs** |  | 27d | 2007-09-28 | 2007-11-05 |  | 0d |  |  | 216h |
| 15 | 1.5.1.1 | Admin - comments made by admin people need to be shown |  | 1w | 2007-09-28 | 2007-10-04 |  | 0d |  | Sima | 40h |
| 16 | 1.5.1.2 | Admin - Coordinator needs to see what models have been assigned to what editor or screener |  | 1w | 2007-10-05 | 2007-10-11 | 15 | 0d |  | Sima | 40h |
| 17 | 1.5.1.3 | Use improved PubMed fetch script on publication submission page |  | 3d | 2007-10-12 | 2007-10-16 | 16 | 0d |  | Sima | 24h |
| 18 | 1.5.1.4 | Do not delete EnvironmentalFactor objects - instead reuse and leave in DB |  | 2d | 2007-10-17 | 2007-10-18 | 17 | 0d |  | Sima | 16h |
| 19 | 1.5.1.5 | Editors do not receive assignment emails |  | 1w | 2007-10-19 | 2007-10-25 | 18 | 0d |  | Sima | 40h |
| 20 | 1.5.1.6 | Keyword search shows models that have not been edited-approved |  | 5d | 2007-10-26 | 2007-11-01 | 19 | 0d |  | Sima | 40h |
| 21 | 1.5.1.7 | data conversion and html code result in funny signs in text |  | 2d | 2007-11-02 | 2007-11-05 | 20 | 0d |  | Sima | 16h |
| 22 | 1.5.2 | **EVSTree Application-side work** |  | 38d | 2007-11-06 | 2007-12-27 |  | 0d |  | Sima | 862h |
| 23 | 1.5.2.1 | **Implementation and Testing** |  | 38d | 2007-11-06 | 2007-12-27 |  | 0d |  | Sima | 558h |
| 24 | 1.5.2.1.1 | Letting a user add and view staining methods that are not part of the vocabulary; affects old and new entries |  | 1w | 2007-11-06 | 2007-11-12 | 21 | 0d |  | Sima [75%] | 30h |
| 25 | 1.5.2.1.2 | Annoyances with EVS organ tree |  | 5w | 2007-11-13 | 2007-12-17 | 24 | 0d |  | Sima [80%] | 160h |
| 26 | 1.5.2.1.3 | Selecting search results in tree causes HTTP 404 Error |  | 3d | 2007-12-18 | 2007-12-20 | 25 | 0d |  | Sima | 24h |
| 27 | 1.5.2.1.4 | Crash - when trying to select search result page crashes |  | 1w | 2007-12-21 | 2007-12-27 | 26 | 0d |  | Sima | 40h |

| ID | WBS | Task | Type | Duration | Start | Finish | Predecessors | Total slack | Free slack | Resources | Work |
| --- | --- | --- | --- | --- | --- | --- | --- | --- | --- | --- | --- |
| 28 | 1.5.3 | **Remote API / Grid** |  | 35d | 2007-12-28 | 2008-02-14 |  | 0d |  |  | 280h |
| 29 | 1.5.3.1 | Leverage caCORE 3.2 for remote API |  | 1w | 2007-12-28 | 2008-01-03 | 27 | 0d |  | Sima | 40h |
| 30 | 1.5.3.2 | Remote API - Redo API to 1.0 of Tool Kit |  | 2w | 2008-01-04 | 2008-01-17 | 29 | 0d |  | Sima | 80h |
| 31 | 1.5.3.3 | Make caMod available in the grid (production) |  | 1w | 2008-01-18 | 2008-01-24 | 30 | 0d |  | Sima | 40h |
| 32 | 1.5.3.4 | Map API to latest OM (2.4) |  | 2w | 2008-01-25 | 2008-02-07 | 31 | 0d |  | Sima | 80h |
| 33 | 1.5.3.5 | Make only edited-approved models available through API |  | 1w | 2008-02-08 | 2008-02-14 | 32 | 0d |  | Sima | 40h |
| 34 | 1.5.4 | **caMOD - caELMIR Integration Tasks** |  | 28d | 2008-02-15 | 2008-03-25 |  | 0d |  |  |  |
| 35 | 1.5.4.1 | Implement Therapy Screen for caELMIR data |  | 2w | 2008-02-15 | 2008-02-28 | 33 | 0d |  |  |  |
| 39 | 1.5.5 | **Testing** |  | 136d | 2007-10-22 | 2008-04-28 |  | 0d |  |  | 312h |
| 40 | 1.5.5.1 | Deploy iteration on DEV Server |  | 2d | 2008-03-26 | 2008-03-27 |  | 0d |  |  |  |
| 41 | 1.5.5.2 | Test on DEV tier |  | 1w | 2008-03-28 | 2008-04-03 | 40 | 0d |  |  |  |
| 42 | 1.5.5.3 | **Transition Phase** |  | 136d | 2007-10-22 | 2008-04-28 |  | 0d |  |  | 312h |
| 43 | 1.5.5.3.1 | **QA** |  | 10d | 2007-10-22 | 2007-11-02 | 5 | 126d |  | QA | 160h |
| 44 | 1.5.5.3.1.1 | Finalize Testplan |  | 1w | 2007-10-22 | 2007-10-26 | 5 | 126d | 0d | QA | 40h |
| 45 | 1.5.5.3.1.2 | Finalize Test Cases |  | 1w | 2007-10-29 | 2007-11-02 | 44 | 126d |  | QA | 40h |
| 46 | 1.5.5.3.2 | **Deploy** |  | 17d | 2008-04-04 | 2008-04-28 |  | 0d |  |  | 152h |
| 47 | 1.5.5.3.2.1 | **QA Server Deployment** |  | 10d | 2008-04-04 | 2008-04-17 | 41 | 0d |  |  | 80h |
| 48 | 1.5.5.3.2.1.1 | QA Testing |  | 2w | 2008-04-04 | 2008-04-17 |  | 0d |  | QA | 80h |
| 49 | 1.5.5.3.2.2 | **Staging Server Deployment** |  | 5d | 2008-04-18 | 2008-04-24 | 48 | 0d |  |  | 40h |
| 50 | 1.5.5.3.2.2.1 | Staging Testing |  | 1w | 2008-04-18 | 2008-04-24 |  | 0d |  | Ulli | 40h |
| 51 | 1.5.5.3.2.3 | **Production Server Deployment** |  | 2d | 2008-04-25 | 2008-04-28 |  | 0d |  | Sima | 32h |
| 52 | 1.5.5.3.2.3.1 | Production Verification |  | 2d | 2008-04-25 | 2008-04-28 | 50 | 0d |  | Ulli | 16h |
| 53 | 1.5.5.4 | caMOD 2.4 - Closeout | milestone | 0d | 2008-04-28 | 2008-04-28 | 52 | 0d |  |  |  |
