# camod Release 2.5.1

Schedule from MS Project, 2009-01-05 to 2009-06-16, A marks actual dates.
NCI

## Calendars

- Standard: Mon-Fri 08:00-12:00, 13:00-17:00; Sat-Sun off.

## Resources

| Resource |
| --- |
| Sima |
| Ulli |
| Juli |
| Maki |
| Kavitha |
| QA |
| Jill |
| Security Team |
| Systems |
| Lalitha |

## Schedule

| ID | WBS | Task | Type | Duration | Start | Finish | Predecessors | Complete | Remaining | Total slack | Constraint | Resources | Work | Actual work |
| --- | --- | --- | --- | --- | --- | --- | --- | --- | --- | --- | --- | --- | --- | --- |
| 1 | 1 | **caMOD 2.5.1 Release** |  | 117d | 2009-01-05 A | 2009-06-16 |  | 14% | 100.44d | 0d |  |  | 1928h | 340h |
| 2 | 1.1 | **Inception Phase** |  | 17d | 2009-01-05 A | 2009-01-27 A |  | 100% |  |  |  |  | 280h | 280h |
| 3 | 1.1.1 | Scope 2.5.1 Release |  | 12d | 2009-01-05 A | 2009-01-21 A |  | 100% |  |  | start no earlier than 2009-01-05 | Sima; Ulli | 184h | 184h |
| 4 | 1.1.2 | Schedule 2.5.1 Release |  | 4d | 2009-01-22 A | 2009-01-27 A | 3 | 100% |  |  | start no earlier than 2009-01-13 | Sima; Maki; Ulli | 96h | 96h |
| 5 | 1.1.3 | Milestone: Inception Completed | milestone | 0d | 2009-01-27 A | 2009-01-27 A | 4 | 100% |  |  |  |  |  |  |
| 6 | 1.2 | **Elaboration Phase** |  | 10d | 2009-02-02 | 2009-02-13 | 5 |  |  | 0d |  |  | 128h |  |
| 7 | 1.2.1 | Use Case and Design Doc (caBIG template) |  | 7d | 2009-02-02 | 2009-02-10 |  |  |  | 0d | start no earlier than 2009-02-02 | Sima | 56h |  |
| 8 | 1.2.2 | Review use cases / design with the "Review Board" |  | 3d | 2009-02-11 | 2009-02-13 | 7 |  |  | 0d | finish no earlier than 2009-01-27 | Juli; Maki; Ulli | 72h |  |
| 9 | 1.2.3 | Milestone: Elaboration Completed | milestone | 0d | 2009-02-13 | 2009-02-13 | 7, 8 |  |  | 1d |  |  |  |  |
| 10 | 1.3 | **Construction Phase** |  | 72d | 2009-02-17 A | 2009-05-27 | 6 | 7% | 66.81d | 14d |  |  | 1192h | 60h |
| 11 | 1.3.1 | **Iteration 1** |  | 10d | 2009-02-17 A | 2009-03-02 |  | 75% | 2.5d | 0d |  |  | 80h | 60h |
| 12 | 1.3.1.1 | **caMOD - Cancer Models Database - Feature Requests** |  | 10d | 2009-02-17 A | 2009-03-02 |  | 75% | 2.5d | 0d |  |  | 80h | 60h |
| 13 | 1.3.1.1.1 | 4772-Make caMod available in the grid using newest technology |  | 10d | 2009-02-17 A | 2009-03-02 |  | 75% | 2.5d | 0d |  | Sima | 80h | 60h |
| 14 | 1.3.1.2 | Milestone: Iteration 1 Completed | milestone | 0d | 2009-03-02 | 2009-03-02 | 12 |  |  | 0d |  |  |  |  |
| 15 | 1.3.2 | **Iteration 2** |  | 40d | 2009-03-03 | 2009-04-27 | 11 |  |  | 0d |  |  | 848h |  |
| 16 | 1.3.2.1 | **caMOD - Cancer Models Database - Feature Requests** |  | 11d | 2009-03-03 | 2009-03-17 |  |  |  | 0d |  |  | 88h |  |
| 17 | 1.3.2.1.1 | 17040-Make PMID field on advanced search page userfriendlier by adding a link to PubMed and trim functions |  | 1d | 2009-03-03 | 2009-03-03 |  |  |  | 0d |  | Sima | 8h |  |
| 18 | 1.3.2.1.2 | 17325-Upgrade caMOD to use caBIO 4.1 to get data |  | 10d | 2009-03-04 | 2009-03-17 | 17 |  |  | 0d |  | Sima | 80h |  |
| 19 | 1.3.2.2 | **caMOD - Cancer Models Database - Bugs** |  | 19d | 2009-03-18 | 2009-04-13 | 16 |  |  | 0d |  |  | 152h |  |
| 20 | 1.3.2.2.1 | 18754-MTB data not displayed - causing crash |  | 5d | 2009-03-18 | 2009-03-24 |  |  |  | 0d |  | Sima | 40h |  |
| 21 | 1.3.2.2.2 | 18717-Sort therapies in the order they are entered |  | 3d | 2009-03-25 | 2009-03-27 | 20 |  |  | 0d |  | Sima | 24h |  |
| 22 | 1.3.2.2.3 | 18694-Correct the spelling of Motility on Therapy/Biological Process page |  | 1d | 2009-03-30 | 2009-03-30 | 21 |  |  | 0d |  | Sima | 8h |  |
| 23 | 1.3.2.2.4 | 18267-No other zebrafish diagnosis shown on search page |  | 1d | 2009-03-31 | 2009-03-31 | 22 |  |  | 0d |  | Sima | 8h |  |
| 24 | 1.3.2.2.5 | 17320-Make sure all filed sizes in database are validated correctly in validation.xml |  | 5d | 2009-04-01 | 2009-04-07 | 23 |  |  | 0d |  | Sima | 40h |  |
| 25 | 1.3.2.2.6 | 12483-why does &amp;amp;amp;amp;quot;unpublished&amp;amp;amp;amp;quot; entry not show up on publication search page |  | 1d | 2009-04-08 | 2009-04-08 | 24 |  |  | 0d |  | Sima | 8h |  |
| 26 | 1.3.2.2.7 | 11623-Construct sequence field on genetic description pages is independent of image submission |  | 2d | 2009-04-09 | 2009-04-10 | 25 |  |  | 0d |  | Sima | 16h |  |
| 27 | 1.3.2.2.8 | 5235-amount of cells on Transplantation needs to accept 10^6 instead of a number (validation) |  | 1d | 2009-04-13 | 2009-04-13 | 26 |  |  | 0d |  | Sima | 8h |  |

| ID | WBS | Task | Type | Duration | Start | Finish | Predecessors | Total slack | Free slack | Resources | Work |
| --- | --- | --- | --- | --- | --- | --- | --- | --- | --- | --- | --- |
| 28 | 1.3.2.3 | **caMOD - Data and Review** |  | 35d | 2009-03-03 | 2009-04-20 |  | 0d |  |  | 568h |
| 29 | 1.3.2.3.1 | 18803-MTB data set deployment |  | 5d | 2009-04-14 | 2009-04-20 | 19 | 0d |  | Sima | 40h |
| 30 | 1.3.2.3.2 | 18803-Import new MTB data set |  | 33d | 2009-03-03 | 2009-04-16 |  | 2d |  | Ulli; Lalitha | 528h |
| 31 | 1.3.2.4 | **EVS Tree** |  | 5d | 2009-04-21 | 2009-04-27 | 28 | 0d |  |  | 40h |
| 32 | 1.3.2.4.1 | 10957-Implement connection to EVS 4.x (Lexbig Vocabuarly System / Architecture) |  | 5d | 2009-04-21 | 2009-04-27 |  | 0d |  | Sima | 40h |
| 33 | 1.3.2.5 | Milestone: Iteration 2 Completed | milestone | 0d | 2009-04-27 | 2009-04-27 | 16, 31, 19, 28 | 0d |  |  |  |
| 34 | 1.3.3 | **Testing** |  | 22d | 2009-04-28 | 2009-05-27 | 11, 15 | 0d |  |  | 264h |
| 35 | 1.3.3.1 | Update test cases |  | 9d | 2009-04-28 | 2009-05-08 | 19, 30 | 0d |  | Sima; Ulli | 88h |
| 36 | 1.3.3.2 | Deploy iteration on DEV Server |  | 2d | 2009-05-11 | 2009-05-12 | 35 | 0d |  | Sima | 16h |
| 37 | 1.3.3.3 | Test on DEV tier |  | 10d | 2009-05-13 | 2009-05-27 | 36 | 0d |  | Sima; Ulli | 160h |
| 38 | 1.3.4 | Milestone: Construction Completed | milestone | 0d | 2009-05-27 | 2009-05-27 | 34 | 14d |  |  |  |
| 39 | 1.4 | **Transition Phase** |  | 36d | 2009-04-28 | 2009-06-16 | 33 | 0d |  |  | 328h |
| 40 | 1.4.1 | **QA** |  | 6d | 2009-04-28 | 2009-05-05 |  | 16d | 0d |  | 48h |
| 41 | 1.4.1.1 | Finalize Testplan |  | 3d | 2009-04-28 | 2009-04-30 | 33 | 16d | 0d | QA | 24h |
| 42 | 1.4.1.2 | Finalize Test Cases |  | 3d | 2009-05-01 | 2009-05-05 | 41 | 16d |  | QA | 24h |
| 43 | 1.4.2 | **Deploy** |  | 14d | 2009-05-28 | 2009-06-16 |  | 0d |  |  | 168h |
| 44 | 1.4.2.1 | **QA Server Deployment** |  | 5d | 2009-05-28 | 2009-06-03 | 34 | 0d |  |  | 40h |
| 45 | 1.4.2.1.1 | QA Testing |  | 5d | 2009-05-28 | 2009-06-03 | 40 | 0d |  | QA | 40h |
| 46 | 1.4.2.1.2 | Milestone: QA Testing Completed | milestone | 0d | 2009-06-03 | 2009-06-03 | 45 | 0d |  |  |  |
| 47 | 1.4.2.2 | **Staging Server Deployment** |  | 5d | 2009-06-04 | 2009-06-10 |  | 0d |  |  | 80h |
| 48 | 1.4.2.2.1 | Stage Testing |  | 5d | 2009-06-04 | 2009-06-10 | 46 | 0d |  | QA | 40h |
| 49 | 1.4.2.2.2 | App scan on Stage |  | 5d | 2009-06-04 | 2009-06-10 | 46 | 0d |  | Security Team | 40h |
| 50 | 1.4.2.2.3 | Milestone: Stage Testing Completed | milestone | 0d | 2009-06-10 | 2009-06-10 | 49, 48 | 0d |  |  |  |
| 51 | 1.4.2.3 | **Production Server Deployment** |  | 4d | 2009-06-11 | 2009-06-16 |  | 0d |  |  | 48h |
| 52 | 1.4.2.3.1 | Production server deployment |  | 2d | 2009-06-11 | 2009-06-12 | 50 | 0d |  | Systems | 16h |
| 53 | 1.4.2.3.2 | Production Verification |  | 2d | 2009-06-15 | 2009-06-16 | 52 | 0d |  | Sima; Ulli | 32h |

| ID | WBS | Task | Type | Duration | Start | Finish | Predecessors | Total slack | Resources | Work |
| --- | --- | --- | --- | --- | --- | --- | --- | --- | --- | --- |
| 54 | 1.4.3 | **Documentation** |  | 5d | 2009-05-06 | 2009-05-12 |  | 25d |  | 40h |
| 55 | 1.4.3.1 | Documentation Edit by Documentation Team |  | 5d | 2009-05-06 | 2009-05-12 | 40 | 25d | Jill | 40h |
| 56 | 1.4.4 | **Content Page Update** |  | 3d | 2009-06-11 | 2009-06-15 |  | 1d |  | 72h |
| 57 | 1.4.4.1 | zope site update |  | 3d | 2009-06-11 | 2009-06-15 | 47 | 1d | Maki; Ulli | 48h |
| 58 | 1.4.4.2 | gForge download site update |  | 3d | 2009-06-11 | 2009-06-15 | 47 | 1d | Sima | 24h |
| 59 | 2 | caMOD 2.5.1 - Closeout | milestone | 0d | 2009-06-16 | 2009-06-16 | 39 | 0d |  |  |
